# Software Development Plan

Schedule from MS Project, 2017-05-02 to 2017-06-22, costs in $, A marks actual dates.

## Calendars

- Standard: Mon 08:00-12:00, 13:00-15:00; Tue 08:00-12:00; Wed off; Thu 08:00-12:00, 13:00-15:00; Fri-Sun off. Exceptions (off unless hours are given): 2017-05-12 08:00-12:00, 13:00-17:00.

## Resources

| Resource | Rate |
| --- | --- |
| Mijin Kang | 25.25 |
| Terrie Sawyer | 25.25 |
| Simone Telford | 25.25 |
| Trent WoodHam | 25.25 |
| Andrew Wong | 25.25 |

## Schedule

| ID | WBS | Task | Type | Duration | Start | Finish | Predecessors | Complete | Remaining | Total slack | Free slack | Constraint | Deadline | Resources | Work | Actual work | Cost | Actual cost |
| --- | --- | --- | --- | --- | --- | --- | --- | --- | --- | --- | --- | --- | --- | --- | --- | --- | --- | --- |
| 1 | 1 | **Requirement Analysis Planning** |  | 2d | 2017-05-02 A | 2017-05-09 |  | 68% | 0.63d | 1.25d |  |  | 2017-05-11 |  | 25.96h | 18.5h | 655.49 | 467.04 |
| 2 | 1.1 | Kickoff Meeting |  | 0.5h | 2017-05-02 A | 2017-05-02 A |  | 100% |  |  |  |  |  | Andrew Wong; Mijin Kang; Simone Telford; Terrie Sawyer; Trent WoodHam | 2.5h | 2.5h | 63.12 | 63.12 |
| 3 | 1.2 | **Client Interview** |  | 1.19d | 2017-05-02 A | 2017-05-04 |  | 66% | 0.4d | 2d |  |  |  | Andrew Wong; Mijin Kang; Simone Telford; Terrie Sawyer; Trent WoodHam | 23.46h | 16h | 592.37 | 403.92 |
| 4 | 1.2.1 | Brainstorm/Interview Prep |  | 5h | 2017-05-02 A | 2017-05-04 | 2 | 64% | 1.8h | 2.36d |  |  |  | Andrew Wong; Mijin Kang; Simone Telford; Terrie Sawyer; Trent WoodHam | 8.5h | 5.5h | 214.62 | 138.88 |
| 5 | 1.2.2 | Research online |  | 0.06d | 2017-05-04 A | 2017-05-04 A | 4 | 100% |  |  |  |  |  | Andrew Wong; Mijin Kang; Simone Telford; Terrie Sawyer; Trent WoodHam | 1.16h | 1.16h | 29.29 | 29.29 |
| 6 | 1.2.3 | Interview Client |  | 0.5h | 2017-05-04 A | 2017-05-04 A | 5 | 100% |  |  |  |  |  | Andrew Wong; Mijin Kang; Simone Telford | 1.5h | 1.5h | 37.88 | 37.88 |
| 7 | 1.2.4 | Collates Interview Notes for Analysis | milestone | 0h | 2017-05-04 A | 2017-05-04 A |  | 100% |  |  |  | finish no earlier than 2017-05-04 |  | Simone Telford |  |  |  |  |
| 8 | 1.2.5 | Project Plan Initial Design |  | 0.24d | 2017-05-04 A | 2017-05-04 | 6 | 55% | 0.11d | 0d |  | must finish on 2017-05-04 |  | Andrew Wong; Mijin Kang; Simone Telford | 6h | 3.15h | 151.5 | 79.54 |
| 9 | 1.3 | Planning Document for Requirements Report | milestone | 0h | 2017-05-04 | 2017-05-04 | 8 |  |  | 2d |  |  |  | Andrew Wong; Mijin Kang |  |  |  |  |
| 10 | 1.4 | **Requirements Report** |  | 0.75d | 2017-05-04 | 2017-05-09 | 8 |  |  | 0d |  |  |  |  |  |  |  |  |
| 11 | 1.4.1 | Executive Summary | milestone | 0d | 2017-05-04 | 2017-05-04 | 13 |  |  | 0d |  | start no earlier than 2017-05-04 |  | Andrew Wong |  |  |  |  |
| 12 | 1.4.2 | Stakeholders | milestone | 0h | 2017-05-04 | 2017-05-04 | 6 |  |  | 0d |  | finish no earlier than 2017-05-04 |  | Mijin Kang |  |  |  |  |
| 13 | 1.4.3 | Introduction | milestone | 0h | 2017-05-04 | 2017-05-04 | 12, 14, 15, 16, 17, 18, 19, 20, 21 |  |  | 0d |  | start no earlier than 2017-05-04 |  | Simone Telford |  |  |  |  |
| 14 | 1.4.4 | Background | milestone | 0h | 2017-05-04 | 2017-05-04 | 6 |  |  | 0d |  | start no earlier than 2017-05-04 |  | Terrie Sawyer |  |  |  |  |
| 15 | 1.4.5 | Purpose | milestone | 0h | 2017-05-04 | 2017-05-04 | 6 |  |  | 0d |  | start no earlier than 2017-05-04 |  | Trent WoodHam |  |  |  |  |
| 16 | 1.4.6 | Scope | milestone | 0h | 2017-05-04 | 2017-05-04 | 6 |  |  | 0d |  | start no earlier than 2017-05-04 |  | Andrew Wong |  |  |  |  |
| 17 | 1.4.7 | Data Gathering Methods and Techniques | milestone | 0h | 2017-05-04 | 2017-05-04 | 6 |  |  | 0d |  | start no earlier than 2017-05-04 |  | Mijin Kang |  |  |  |  |
| 18 | 1.4.8 | Constraints | milestone | 0h | 2017-05-04 | 2017-05-04 | 6 |  |  | 0d |  | start no earlier than 2017-05-04 |  | Simone Telford |  |  |  |  |
| 19 | 1.4.9 | Project Requirements | milestone | 0h | 2017-05-04 | 2017-05-04 | 6 |  |  | 0d |  | start no earlier than 2017-05-04 |  | Terrie Sawyer |  |  |  |  |
| 20 | 1.4.10 | Recommendations | milestone | 0h | 2017-05-04 | 2017-05-04 | 6 |  |  | 0d |  | start no earlier than 2017-05-04 |  | Trent WoodHam |  |  |  |  |
| 21 | 1.4.11 | Appendices | milestone | 0h | 2017-05-04 | 2017-05-04 | 6 |  |  | 0d |  | start no earlier than 2017-05-04 |  | Andrew Wong; Simone Telford |  |  |  |  |
| 22 | 1.4.12 | Team Review | milestone | 0h | 2017-05-09 | 2017-05-09 | 11 |  |  | 1.25d | 0d | start no earlier than 2017-05-09 |  | Andrew Wong; Mijin Kang; Simone Telford; Terrie Sawyer; Trent WoodHam |  |  |  |  |
| 23 | 1.4.13 | Formatting of Document | milestone | 0h | 2017-05-09 | 2017-05-09 | 22 |  |  | 1.25d |  |  |  | Simone Telford |  |  |  |  |
| 24 | 2 | **System Design & Specification** |  | 0h | 2017-05-08 | 2017-05-08 | 11 |  |  |  |  |  | 2017-06-02 |  |  |  |  |  |
| 25 | 2.1 | Case Diagrams | milestone | 0h | 2017-05-08 | 2017-05-08 | 11 |  |  | 0d |  |  |  |  |  |  |  |  |
| 26 | 2.2 | Database Requirements | milestone | 0h | 2017-05-08 | 2017-05-08 | 11 |  |  | 0d |  |  |  |  |  |  |  |  |
| 27 | 2.3 | Database Design | milestone | 0h | 2017-05-08 | 2017-05-08 | 26 |  |  | 0d |  |  |  |  |  |  |  |  |
| 28 | 2.4 | Entity Relationship Diagrams | milestone | 0h | 2017-05-08 | 2017-05-08 | 27 |  |  | 0d |  |  |  |  |  |  |  |  |
| 29 | 2.5 | Test Data | milestone | 0h | 2017-05-08 | 2017-05-08 | 28 |  |  | 0d |  |  |  |  |  |  |  |  |
| 30 | 2.6 | Task Object Event Chart | milestone | 0h | 2017-05-08 | 2017-05-08 | 25 |  |  | 0d |  |  |  |  |  |  |  |  |
| 31 | 2.7 | Class Diagrams | milestone | 0h | 2017-05-08 | 2017-05-08 | 25 |  |  | 0d |  |  |  |  |  |  |  |  |
| 32 | 2.8 | Complete Project Design Document | milestone | 0h | 2017-05-08 | 2017-05-08 | 25, 26, 27, 28, 29, 30 |  |  | 0d |  |  |  |  |  |  |  |  |
| 33 | 2.9 | Client Sign Off | milestone | 0h | 2017-05-08 | 2017-05-08 | 34 |  |  | 0d |  |  |  |  |  |  |  |  |
| 34 | 2.10 | Design Complete | milestone | 0h | 2017-05-08 | 2017-05-08 | 32 |  |  | 0d |  |  |  |  |  |  |  |  |

| ID | WBS | Task | Type | Duration | Start | Finish | Predecessors | Total slack | Constraint | Deadline |
| --- | --- | --- | --- | --- | --- | --- | --- | --- | --- | --- |
| 35 | 3 | **Coding & Verification** |  | 0h | 2017-05-08 | 2017-05-08 | 34 |  |  | 2017-06-22 |
| 36 | 3.1 | Develop Code | milestone | 0h | 2017-05-08 | 2017-05-08 | 34 | 0d |  |  |
| 37 | 3.2 | Test & Debug | milestone | 0h | 2017-05-08 | 2017-05-08 | 36 | 0d |  |  |
| 38 | 3.3 | **Update Documents** |  | 0h | 2017-05-08 | 2017-05-08 | 37 |  |  |  |
| 39 | 3.3.1 | Client Requirements Document | milestone | 0h | 2017-05-08 | 2017-05-08 |  | 0d |  |  |
| 40 | 3.3.2 | Entity Relationship Diagrams | milestone | 0h | 2017-05-08 | 2017-05-08 |  | 0d |  |  |
| 41 | 3.3.3 | Class Diagrams | milestone | 0h | 2017-05-08 | 2017-05-08 |  | 0d |  |  |
| 42 | 3.4 | **Prepare Documents** |  | 0h | 2017-05-08 | 2017-05-08 | 37 |  |  |  |
| 43 | 3.4.1 | Testing Program Document | milestone | 0h | 2017-05-08 | 2017-05-08 |  | 0d |  |  |
| 44 | 3.4.2 | Error Framework | milestone | 0h | 2017-05-08 | 2017-05-08 |  | 0d |  |  |
| 45 | 3.4.3 | Program Validation | milestone | 0h | 2017-05-08 | 2017-05-08 |  | 0d |  |  |
| 46 | 3.4.4 | User's Manual | milestone | 0h | 2017-05-08 | 2017-05-08 |  | 0d |  |  |
| 47 | 3.5 | Project Complete | milestone | 0h | 2017-06-22 | 2017-06-22 | 42, 38 | 0d | finish no earlier than 2017-06-22 |  |
